# ETSISOFT - 2324

Schedule from MS Project, 2023-11-20 to 2024-01-09, costs in €.

## Calendars

- ETSISOFT2324: Mon-Fri 09:00-13:00, 15:00-19:00; Sat-Sun off. Exceptions (off unless hours are given): 2023-12-06 (Día de la Inmaculada Concepción, recurring), 2023-12-08 (Día de la Constitución, recurring), 2023-12-25 (Navidad, recurring), 2024-01-01 (Año Nuevo, recurring), 2024-01-06 (Día de la Epifanía del Señor, recurring).

## Resources

| Resource | Group | Unit | Rate | Cost per use |
| --- | --- | --- | --- | --- |
| Soporte | Materiales | Soporte | 9.5 |  |
| Ordenador Servidor | Materiales | Instalación | 3600 | 150 |
| Windows 2022 Server | Materiales | Instalación | 850 |  |
| Switch 48 puertos 10/100/1000 MHz gestionable | Materiales | Instalación | 1250 |  |
| Patch Panel 48 puertos | Materiales | instalación | 220 |  |
| Armario 24 unidades | Materiales | Instalación | 850 |  |
| Juan Pérez | Analista, Supervisor |  | 29.15 |  |
| Javier Gutierrez | Jefe de Proyecto, Analista |  | 29.15 |  |
| Sara Carbonero | Analista, Supervisor |  | 29.15 |  |
| Vicente Ruiz | Analista, Programador |  | 29.15 |  |
| Francisco Delgado | Programador, Analista |  | 22.83 |  |
| Trabajador Soporte1 | Montador Soporte |  | 35 |  |
| Trabajador Soporte2 | Montador Soporte |  | 35 |  |
| Báscula |  |  | 38 |  |
| Torno |  |  | 1580 |  |
| Barreras/Pasillos |  |  |  |  |
| Dispositivos Biometricos |  |  | 1240 |  |

## Schedule

| ID | WBS | Task | Duration | Start | Finish | Predecessors | Total slack | Free slack | Constraint | Resources | Work | Cost |
| --- | --- | --- | --- | --- | --- | --- | --- | --- | --- | --- | --- | --- |
| 1 | 1 | **Instalación de elementos de control en puestos de líneas de producción** | 22d | 2023-11-20 | 2023-12-21 |  | 10.62d |  |  |  | 174h | 20,323.56 |
| 2 | 1.1 | Montaje de los soportes metálicos donde se apoyan las básculas | 56h | 2023-11-20 | 2023-11-28 |  | 11d | 0d |  | Trabajador Soporte1; Trabajador Soporte2; Soporte [240 Soporte] | 120h | 6,564 |
| 3 | 1.2 | **Habilitar punto de corriente** | 7d | 2023-11-30 | 2023-12-12 |  | 14.62d |  |  |  |  | 1,250 |
| 4 | 1.2.1 | Instalar cables | 4d | 2023-11-30 | 2023-12-05 | 2FS+1ed | 14.62d | 0d |  |  |  | 700 |
| 5 | 1.2.2 | Instalar puntos de Corriente | 2d | 2023-12-07 | 2023-12-11 | 4 | 14.62d | 0d |  |  |  | 350 |
| 6 | 1.2.3 | Pruebas | 1d | 2023-12-12 | 2023-12-12 | 5 | 14.62d | 4d |  |  |  | 200 |
| 7 | 1.3 | **Habilitar punto de red** | 11d | 2023-11-30 | 2023-12-18 |  | 10.62d |  |  |  |  | 1,920 |
| 8 | 1.3.1 | Instalar canaletas | 2d | 2023-11-30 | 2023-12-01 | 2FS+1ed | 10.62d | 0d |  |  |  | 220 |
| 9 | 1.3.2 | instalar cables | 4d | 2023-12-04 | 2023-12-11 | 8 | 10.62d | 0d |  |  |  | 650 |
| 10 | 1.3.3 | Instalar tomas de red en puestos | 2d | 2023-12-12 | 2023-12-13 | 9 | 10.62d | 0d |  |  |  | 400 |
| 11 | 1.3.4 | Montaje de Armario de comunicaciones, acabado en armario, realización de pruebas y certificación de la red | 3d | 2023-12-14 | 2023-12-18 | 10 | 10.62d | 0d |  |  |  | 650 |
| 12 | 1.4 | Montaje de la báscula | 24h | 2023-12-19 | 2023-12-21 | 6, 11 | 10.62d |  |  | Javier Gutierrez; Juan Pérez; Báscula [24000%] | 54h | 10,589.56 |
| 13 | 2 | **Instalación de tornos de acceso** | 2d | 2023-12-19 | 2023-12-20 |  | 11.62d |  |  |  | 32h | 9,993.81 |
| 14 | 2.1 | **Montaje de los tornos y barreras** | 1.5d | 2023-12-19 | 2023-12-20 |  | 11.62d |  |  |  | 24h | 4,855.6 |
| 15 | 2.1.1 | Montaje de Tornos | 1d | 2023-12-19 | 2023-12-19 | 6, 11, 2 | 11.62d | 0d | start no earlier than 2023-12-13 | Trabajador Soporte1; Trabajador Soporte2; Torno [200%] | 16h | 3,720 |
| 16 | 2.1.2 | Montaje de Barreras | 0.5d | 2023-12-20 | 2023-12-20 | 15 | 12.12d |  |  | Trabajador Soporte1; Trabajador Soporte2 | 8h | 1,135.6 |
| 17 | 2.2 | Integración de dispositivos faciales | 1d | 2023-12-20 | 2023-12-20 | 15 | 11.62d |  |  | Sara Carbonero; Dispositivos Biometricos [400%] | 8h | 5,138.21 |
| 18 | 3 | **Instalación de infraestructura común de red yequipamiento informático** | 2d | 2023-12-19 | 2023-12-20 |  | 11.62d |  |  |  |  | 14,270 |
| 19 | 3.1 | Instalación Servidor | 2d | 2023-12-19 | 2023-12-20 | 6, 11 | 11.62d |  |  | Ordenador Servidor [1 Instalación]; Windows 2022 Server [1 Instalación]; Armario 24 unidades [1 Instalación]; Patch Panel 48 puertos [6 instalación]; Switch 48 puertos 10/100/1000 MHz gestionable [6 Instalación] |  | 14,270 |
| 20 | 4 | **Desarrollo de la aplicación informática** | 29.12d | 2023-11-20 | 2024-01-04 |  | 0d |  |  |  | 693.99h | 18,754.07 |
| 21 | 4.1 | **Análisis** | 11.75d | 2023-11-20 | 2023-12-05 |  | 0d |  |  |  | 317.99h | 9,023.45 |
| 22 | 4.1.1 | Definición del Sistema | 24h | 2023-11-20 | 2023-11-22 |  | 0d |  |  | Vicente Ruiz; Sara Carbonero; Juan Pérez | 93.99h | 2,824.16 |
| 23 | 4.1.2 | Establecimiento de Requisitos | 21h | 2023-11-23 | 2023-11-27 | 22 | 2.38d |  |  | Juan Pérez; Sara Carbonero | 42h | 1,224.3 |
| 24 | 4.1.3 | Análisis de Casos de Uso | 19h | 2023-11-27 | 2023-11-29 | 22 | 0d |  |  | Sara Carbonero; Juan Pérez | 38h | 1,107.7 |
| 25 | 4.1.4 | Análisis de Clases | 26h | 2023-11-23 | 2023-11-28 | 22 | 1.75d |  |  | Francisco Delgado; Vicente Ruiz | 52h | 1,351.48 |
| 26 | 4.1.5 | Identificación de las Interfaces de Usuarios | 14h | 2023-11-28 | 2023-11-29 | 22 | 0d |  |  | Francisco Delgado; Vicente Ruiz | 28h | 727.72 |
| 27 | 4.1.6 | Análisis de la Consistencia | 16h | 2023-11-30 | 2023-12-01 | 23, 24, 25, 26 | 0d |  |  | Sara Carbonero; Vicente Ruiz | 36h | 1,028.37 |
| 28 | 4.1.7 | Aprobación del Análisis | 14h | 2023-12-04 | 2023-12-05 | 27 | 0d |  |  | Sara Carbonero; Vicente Ruiz | 28h | 759.72 |

| ID | WBS | Task | Duration | Start | Finish | Predecessors | Total slack | Constraint | Resources | Work | Cost |
| --- | --- | --- | --- | --- | --- | --- | --- | --- | --- | --- | --- |
| 29 | 4.2 | **Diseño** | 7d | 2023-12-05 | 2023-12-18 |  | 0d |  |  | 176h | 4,817.36 |
| 30 | 4.2.1 | Definición de la Arquitectura del Sistema | 16h | 2023-12-05 | 2023-12-11 | 28 | 0d |  | Sara Carbonero; Juan Pérez | 32h | 932.8 |
| 31 | 4.2.2 | Diseño de Clases | 32h | 2023-12-11 | 2023-12-15 | 30 | 0d |  | Francisco Delgado; Sara Carbonero | 48h | 1,298.08 |
| 32 | 4.2.3 | Diseño de los Datos | 32h | 2023-12-11 | 2023-12-15 | 30 | 0d |  | Juan Pérez; Vicente Ruiz | 64h | 1,736.51 |
| 33 | 4.2.4 | Verificación del Diseño | 8h | 2023-12-15 | 2023-12-18 | 31, 32 | 0d |  | Juan Pérez; Sara Carbonero; Vicente Ruiz; Francisco Delgado | 32h | 849.97 |
| 34 | 4.3 | **Construcción** | 6.75d | 2023-12-18 | 2023-12-28 |  | 0d |  |  | 136h | 3,348.74 |
| 35 | 4.3.1 | Codificación de las clases | 32h | 2023-12-18 | 2023-12-22 | 33 | 0d |  | Francisco Delgado; Vicente Ruiz | 72h | 1,757.43 |
| 36 | 4.3.2 | Integración del Sistema | 14h | 2023-12-22 | 2023-12-27 | 35 | 0d |  | Francisco Delgado; Vicente Ruiz | 28h | 684.67 |
| 37 | 4.3.3 | Aprobación del Sistema | 8h | 2023-12-27 | 2023-12-28 | 36 | 0d |  | Juan Pérez; Francisco Delgado; Vicente Ruiz; Sara Carbonero | 36h | 906.64 |
| 38 | 4.4 | **Pruebas** | 3.62d | 2023-12-28 | 2024-01-04 |  | 0d |  |  | 64h | 1,564.51 |
| 39 | 4.4.1 | Ejecución Pruebas Unitarias | 16h | 2023-12-28 | 2024-01-02 | 37 | 0d |  | Francisco Delgado; Vicente Ruiz | 38h | 928.74 |
| 40 | 4.4.2 | Ejecución de las Pruebas de Integración | 13h | 2024-01-02 | 2024-01-04 | 39 | 0d |  | Vicente Ruiz; Francisco Delgado | 26h | 635.76 |
| 41 | 5 | **Instalación del Software y Prueba del Sistema** | 3.5d | 2024-01-04 | 2024-01-09 |  | 0d |  |  | 56h | 1,394.55 |
| 42 | 5.1 | Instalación y configuración APP EPSSOFT | 13h | 2024-01-04 | 2024-01-05 | 40 | 0d |  | Javier Gutierrez; Juan Pérez | 26h | 676.13 |
| 43 | 5.2 | Prueba Global del Sistema | 15h | 2024-01-05 | 2024-01-09 | 42 | 0d |  | Sara Carbonero; Vicente Ruiz | 30h | 718.43 |
| 44 | 6 | **Reunión** | 31.5d | 2023-11-20 | 2024-01-08 |  | 1.12d |  |  | 72h | 4,052.53 |
| 45 | 6.1 | Reunión 1 | 4h | 2023-11-20 | 2023-11-20 |  | 32.12d | start no earlier than 2023-11-20 | Francisco Delgado; Javier Gutierrez; Juan Pérez; Sara Carbonero; Vicente Ruiz | 12h | 687.16 |
| 46 | 6.2 | Reunión 2 | 4h | 2023-11-27 | 2023-11-27 |  | 27.12d | start no earlier than 2023-11-27 | Francisco Delgado; Javier Gutierrez; Juan Pérez; Sara Carbonero; Vicente Ruiz | 12h | 687.16 |
| 47 | 6.3 | Reunión 3 | 4h | 2023-12-04 | 2023-12-04 |  | 22.12d | start no earlier than 2023-12-04 | Francisco Delgado; Javier Gutierrez; Juan Pérez; Sara Carbonero; Vicente Ruiz | 12h | 679.09 |
| 48 | 6.4 | Reunión 4 | 4h | 2023-12-11 | 2023-12-11 |  | 19.12d | start no earlier than 2023-12-11 | Francisco Delgado; Javier Gutierrez; Juan Pérez; Sara Carbonero; Vicente Ruiz | 12h | 679.09 |
| 49 | 6.5 | Reunión 5 | 4h | 2023-12-18 | 2023-12-18 |  | 14.12d | start no earlier than 2023-12-18 | Francisco Delgado; Javier Gutierrez; Juan Pérez; Sara Carbonero; Vicente Ruiz | 12h | 679.09 |
| 50 | 6.6 | Reunión 6 | 4h | 2024-01-08 | 2024-01-08 |  | 1.12d | start no earlier than 2024-01-08 | Francisco Delgado; Javier Gutierrez; Juan Pérez; Sara Carbonero; Vicente Ruiz | 12h | 640.94 |
