# ETSISOFT - 2324

Schedule from MS Project, 2023-11-20 to 2024-01-11, costs in €.

## Calendars

- ETSISOFT2324: Mon-Fri 09:00-13:00, 15:00-19:00; Sat-Sun off. Exceptions (off unless hours are given): 2023-12-06 (Día de la Inmaculada Concepción, recurring), 2023-12-08 (Día de la Constitución, recurring), 2023-12-25 (Navidad, recurring), 2024-01-01 (Año Nuevo, recurring), 2024-01-06 (Día de la Epifanía del Señor, recurring).

## Resources

| Resource | Group | Unit | Rate | Cost per use |
| --- | --- | --- | --- | --- |
| Soporte | Materiales | Soporte | 9.5 |  |
| Ordenador Servidor | Materiales | Instalación | 3600 | 150 |
| Windows 2022 Server | Materiales | Instalación | 850 |  |
| Switch 48 puertos 10/100/1000 MHz gestionable | Materiales | Instalación | 1250 |  |
| Patch Panel 48 puertos | Materiales | instalación | 220 |  |
| Armario 24 unidades | Materiales | Instalación | 850 |  |
| Juan Pérez | Analista, Supervisor |  | 21.84 |  |
| Javier Gutierrez | Jefe de Proyecto, Analista |  | 21.84 |  |
| Sara Carbonero | Analista, Supervisor |  | 21.84 |  |
| Vicente Ruiz | Analista, Programador |  | 21.84 |  |
| Francisco Delgado | Programador, Analista |  | 17.1 |  |
| Trabajador Soporte1 | Montador Soporte |  | 35 |  |
| Trabajador Soporte2 | Montador Soporte |  | 35 |  |
| Báscula |  |  | 38 |  |
| Torno |  |  | 1580 |  |
| Barreras/Pasillos |  |  |  |  |
| Dispositivos Biometricos |  |  | 1240 |  |

## Schedule

| ID | WBS | Task | Duration | Start | Finish | Predecessors | Total slack | Free slack | Resources | Cost |
| --- | --- | --- | --- | --- | --- | --- | --- | --- | --- | --- |
| 1 | 1 | **Instalación de elementos de control en puestos de líneas de producción** | 34.5d | 2023-11-20 | 2024-01-11 |  | 0d |  |  | 3,170 |
| 2 | 1.1 | Montaje de los soportes metálicos donde se apoyan las básculas | 120h | 2023-11-20 | 2023-12-12 |  | 0d |  |  |  |
| 3 | 1.2 | **Habilitar punto de corriente** | 7d | 2023-12-14 | 2023-12-22 | 2FS+1ed | 4d |  |  | 1,250 |
| 4 | 1.2.1 | Instalar cables | 4d | 2023-12-14 | 2023-12-19 |  | 4d | 0d |  | 700 |
| 5 | 1.2.2 | Instalar puntos de Corriente | 2d | 2023-12-20 | 2023-12-21 | 4 | 4d | 0d |  | 350 |
| 6 | 1.2.3 | Pruebas | 1d | 2023-12-22 | 2023-12-22 | 5 | 4d |  |  | 200 |
| 7 | 1.3 | **Habilitar punto de red** | 11d | 2023-12-14 | 2023-12-29 | 2FS+1ed | 0d |  |  | 1,920 |
| 8 | 1.3.1 | Instalar canaletas | 2d | 2023-12-14 | 2023-12-15 |  | 0d |  |  | 220 |
| 9 | 1.3.2 | instalar cables | 4d | 2023-12-18 | 2023-12-21 | 8 | 0d |  |  | 650 |
| 10 | 1.3.3 | Instalar tomas de red en puestos | 2d | 2023-12-22 | 2023-12-26 | 9 | 0d |  |  | 400 |
| 11 | 1.3.4 | Montaje de Armario de comunicaciones, acabado en armario, realización de pruebas y certificación de la red | 3d | 2023-12-27 | 2023-12-29 | 10 | 0d |  |  | 650 |
| 12 | 1.4 | Montaje de la báscula | 60h | 2024-01-02 | 2024-01-11 | 3, 7 | 0d |  |  |  |
| 13 | 2 | **Instalación de tornos de acceso** | 4d | 2023-12-13 | 2023-12-18 |  | 15.5d |  |  | 7,170 |
| 14 | 2.1 | **Montaje de los tornos y barreras** | 3d | 2023-12-13 | 2023-12-15 | 2 | 15.5d | 0d |  | 7,170 |
| 15 | 2.1.1 | Montaje de tornos | 2d | 2023-12-13 | 2023-12-14 |  | 15.5d | 0d | Torno [400%] | 6,320 |
| 16 | 2.1.2 | Montaje de Barreras | 1d | 2023-12-15 | 2023-12-15 | 15 | 15.5d |  |  | 850 |
| 17 | 2.2 | Integración de dispositivos faciales | 1d | 2023-12-18 | 2023-12-18 | 14 | 15.5d |  |  |  |
| 18 | 3 | **Instalación de infraestructura común de red yequipamiento informático** | 2d | 2024-01-02 | 2024-01-03 | 3, 7 | 5.5d |  |  |  |
| 19 | 3.1 | Instalación Servidor | 2d | 2024-01-02 | 2024-01-03 |  | 5.5d |  |  |  |
| 20 | 4 | Desarrollo de la aplicación informática | 1d? | 2023-11-20 | 2023-11-20 |  | 33.5d |  |  |  |
